# GTAS 1.0

Schedule from MS Project, 2002-03-04 to 2002-11-21, A marks actual dates.
GridNode Pte Ltd

## Calendars

- Standard: Mon-Fri 08:00-12:00, 13:00-17:00; Sat-Sun off. Exceptions (off unless hours are given): 2002-05-01, 2002-05-27, 2002-08-09.

## Resources

| Resource |
| --- |
| LK |
| menghua |
| AK |
| soklay |
| huilinn |
| kanmun |
| mathewyap |
| jagadeesh |
| AT |
| LT |
| DN |
| hansing |
| BS |
| andrewhill |
| jianyu |
| menghu |
| jaredlow |
| danieldcotta |

## Schedule

| ID | WBS | Task | Duration | Start | Finish | Predecessors | Complete | Remaining | Baseline start | Baseline finish | Baseline duration | Total slack | Constraint | Deadline | Resources | Work | Actual work | Text4 | Text1 | Text2 |
| --- | --- | --- | --- | --- | --- | --- | --- | --- | --- | --- | --- | --- | --- | --- | --- | --- | --- | --- | --- | --- |
| 1 | 1 | **GridTalk 2.0 Project** | 186d | 2002-03-04 A | 2002-11-21 |  | 60% | 74.64d |  |  |  | 0d |  |  |  | 12335.4h | 8268.51h |  |  |  |
| 2 | 1.1 | Project preparation and requirements | 20d | 2002-03-04 A | 2002-03-29 A |  | 100% |  |  |  |  |  |  |  | LK; menghua; AK; soklay; huilinn; kanmun; mathewyap; jagadeesh | 1280h | 1280h | LK,MH,AK,SL,HL,KM,MY,JD |  |  |
| 3 | 1.2 | **Iteration 1** | 43d | 2002-04-01 A | 2002-05-31 | 2 | 71% | 12.3d |  |  |  | 0d |  |  |  | 3945.15h | 3408.4h |  |  |  |
| 4 | 1.2.1 | Stories OOAD and discussions. System setup. | 10d | 2002-04-01 A | 2002-04-12 A |  | 100% |  | 2002-03-11 | 2002-03-15 | 5d |  |  | 2002-05-15 | menghua; AK; soklay; huilinn; kanmun; mathewyap; jagadeesh; andrewhill | 640h | 640h | MH,AK,SL,HL,KM,MY,JD,AH |  |  |
| 5 | 1.2.2 | **Request Processing Framework** | 4d | 2002-04-15 A | 2002-04-18 A |  | 100% |  |  |  |  |  |  | 2002-05-15 |  | 48h | 48h |  |  |  |
| 6 | 1.2.2.1 | **P-tier to B-Tier request processing framework** | 4d | 2002-04-15 A | 2002-04-18 A |  | 100% |  |  |  |  |  |  | 2002-05-15 | menghua | 48h | 48h |  |  |  |
| 7 | 1.2.2.1.1 | Request processing framework in Framework layer | 3d | 2002-04-15 A | 2002-04-17 A | 4 | 100% |  |  |  |  |  |  | 2002-05-15 | menghua [50%] | 12h | 12h | MH[80%] | GNDB00006929 | BaseCMActivity |
| 8 | 1.2.2.1.2 | Request Dispatcher in GTAS: dispatches request to target action objects | 1d | 2002-04-18 A | 2002-04-18 A | 7 | 100% |  |  |  |  |  |  | 2002-05-15 | menghua [50%] | 4h | 4h | MH[80%] | GNDB00006928 | BaseCMActivity |
| 9 | 1.2.3 | **User management - Create/Update/Delete User** | 26.5d | 2002-04-15 A | 2002-05-22 A |  | 100% |  | 2002-03-18 | 2002-03-20 | 3d |  |  | 2002-05-15 | soklay [34%]; huilinn [34%] | 460.16h | 460.16h |  |  |  |
| 10 | 1.2.3.1 | **User Configuration/Management: allow create, update and delete** | 26.5d | 2002-04-15 A | 2002-05-22 A |  | 100% |  |  |  |  |  |  | 2002-05-15 | soklay | 316h | 316h |  |  |  |
| 11 | 1.2.3.1.1 | User Management in App service layer | 4d | 2002-04-15 A | 2002-04-18 A | 4 | 100% |  |  |  |  |  |  | 2002-05-15 | soklay | 32h | 32h | SL,HL | GNDB00006887 | BaseCMActivity |
| 12 | 1.2.3.1.2 | User Management in GTAS | 3d | 2002-04-19 A | 2002-04-24 A | 11 | 100% |  |  |  |  |  | finish no earlier than 2002-04-15 | 2002-05-15 | soklay | 24h | 24h |  | GNDB00006888 | BaseCMActivity |
| 13 | 1.2.3.1.3 | Web Frontend for User Configuration | 3d | 2002-05-17 A | 2002-05-22 A | 27 | 100% |  |  |  |  |  | start no earlier than 2002-05-06 | 2002-05-15 | andrewhill | 24h | 24h | AH | GNDB00006890 | BaseCMActivity |
| 14 | 1.2.3.1.4 | Enhance PDIPFramework Modules | 3d | 2002-04-25 A | 2002-04-30 A | 12 | 100% |  |  |  |  |  |  | 2002-05-15 | soklay | 24h | 24h |  | GNDB00006934 | BaseCMActivity |
| 15 | 1.2.4 | **Session management** | 5d | 2002-05-06 A | 2002-05-10 A |  | 100% |  |  |  |  |  |  | 2002-05-15 | soklay [33%]; huilinn [33%] | 93.12h | 93.12h |  |  |  |
| 16 | 1.2.4.1 | **Session Management : provide session tracking** | 5d | 2002-05-06 A | 2002-05-10 A |  | 100% |  |  |  |  |  |  | 2002-05-15 | huilinn | 72h | 72h |  |  |  |
| 17 | 1.2.4.1.1 | Session management data setup | 3d | 2002-05-06 A | 2002-05-08 A | 11 | 100% |  |  |  |  |  |  | 2002-05-15 | huilinn | 24h | 24h | HL | GNDB00007119 | BaseCMActivity |
| 18 | 1.2.4.1.2 | Session Manager | 2d | 2002-05-09 A | 2002-05-10 A | 17 | 100% |  |  |  |  |  |  | 2002-05-15 | huilinn | 16h | 16h | HL | GNDB00007128 | BaseCMActivity |
| 19 | 1.2.5 | **Access control - User Access Policy** | 6.5d | 2002-05-08 A | 2002-05-16 A |  | 100% |  |  |  |  |  |  | 2002-05-15 | soklay [33%]; huilinn [33%] | 138.32h | 138.32h |  |  |  |
| 20 | 1.2.5.1 | **Access Control: provide functionality, action and workspace based access control** | 6.5d | 2002-05-08 A | 2002-05-16 A |  | 100% |  |  |  |  |  |  | 2002-05-15 | soklay | 104h | 104h |  |  |  |
| 21 | 1.2.5.1.1 | Roles Management | 3.5d | 2002-05-08 A | 2002-05-13 A | 32 | 100% |  |  |  |  |  |  | 2002-05-15 | kanmun | 28h | 28h | KM | GNDB00007113 | BaseCMActivity |
| 22 | 1.2.5.1.2 | Assign Roles to User | 3d | 2002-05-13 A | 2002-05-16 A | 21 | 100% |  |  |  |  |  |  | 2002-05-15 | kanmun | 24h | 24h | KM | GNDB00007116 | BaseCMActivity |
| 23 | 1.2.6 | **Access control - User Authentication** | 12d | 2002-04-30 A | 2002-05-17 A |  | 100% |  |  |  |  |  |  | 2002-05-15 |  | 164h | 164h |  |  |  |
| 24 | 1.2.6.1 | **User Authentication: handle user login/logout** | 12d | 2002-04-30 A | 2002-05-17 A |  | 100% |  |  |  |  |  |  | 2002-05-15 | soklay | 164h | 164h |  |  |  |
| 25 | 1.2.6.1.1 | User Login Authentication (without Session and roles) | 4d | 2002-04-30 A | 2002-05-07 A | 14 | 100% |  |  |  |  |  |  | 2002-05-15 | soklay | 32h | 32h | SL | GNDB00007118 | BaseCMActivity |
| 26 | 1.2.6.1.2 | User Logout | 2d | 2002-05-07 A | 2002-05-09 A | 25 | 100% |  |  |  |  |  |  | 2002-05-15 | soklay | 16h | 16h | SL | GNDB00007122 | BaseCMActivity |
| 27 | 1.2.6.1.3 | Web front end for User Login | 2.5d | 2002-05-15 A | 2002-05-17 A | 47 | 100% |  |  |  |  |  |  | 2002-05-15 | andrewhill | 20h | 20h | AH | GNDB00007127 | BaseCMActivity |

Notes:
- 6: Text3: 1 -1284391074 2 -2114048831 3 0 4 0 5 0 6 0 7 0 8 0 9 0 10 0 11 0
- 7: Text3: 1 -890612544 2 -2114048831 3 -426762856 4 -662192686 5 -1745448935 6 1441808847 7 944625886 8 -1093031312 9 -1745448935 10 -426762856 11 -662192686
- 8: Text3: 1 -1853383399 2 -2114048831 3 326014504 4 697099871 5 -1603213553 6 1441808847 7 -525321833 8 -1093031312 9 -1603213553 10 326014504 11 697099871
- 10: Text3: 1 655593838 2 -540807320 3 0 4 0 5 0 6 0 7 0 8 0 9 0 10 -638967038 11 0
- 11: Text3: 1 1900348228 2 -540807320 3 -426762856 4 697099871 5 -633458414 6 1441808847 7 625535078 8 -1093031312 9 -633458414 10 -426762856 11 697099871
- 12: Text3: 1 -1068835911 2 -540807320 3 -1922649076 4 -1437441840 5 -1641933033 6 1441808847 7 944625886 8 -1093031312 9 -1641933033 10 -1922649076 11 -1437441840
- 13: Text3: 1 1228211900 2 1095481056 3 -245481404 4 685958837 5 -1641933033 6 1441808847 7 944625886 8 -1093031312 9 -1641933033 10 -245481404 11 685958837
- 14: Text3: 1 977719770 2 -540807320 3 -1310773251 4 806301901 5 -1641933033 6 1441808847 7 944625886 8 -1093031312 9 -1641933033 10 -1310773251 11 806301901
- 16: Text3: 1 -1623225561 2 -1921325360 3 -277103134 4 -1437441840 5 -902196559 6 -902196559 7 -1671202229 8 -1671202229 9 1441808847 10 0 11 0
- 17: Text3: 1 -835495491 2 -1921325360 3 297771230 4 898949146 5 -1641933033 6 1441808847 7 944625886 8 -1093031312 9 -1641933033 10 297771230 11 898949146
- 18: Text3: 1 -621534243 2 -1921325360 3 -525010093 4 -405962962 5 1651914457 6 1441808847 7 -216986757 8 -1093031312 9 1651914457 10 -525010093 11 -405962962
- 20: Text3: 1 1358764231 2 -540807320 3 -837516616 4 -662192686 5 1216082954 6 1216082954 7 1750817489 8 1750817489 9 1441808847 10 0 11 0
- 21: Text3: 1 1926329695 2 337058152 3 259428461 4 1589832586 5 1540553238 6 1441808847 7 -1372302506 8 -1093031312 9 1540553238 10 259428461 11 1589832586
- 22: Text3: 1 1360464401 2 337058152 3 -122298306 4 -1192550194 5 -1641933033 6 1441808847 7 944625886 8 -1093031312 9 -1641933033 10 -122298306 11 -1192550194
- 24: Text3: 1 -1982894828 2 -540807320 3 326014504 4 -1437441840 5 -1107602742 6 -1107602742 7 -300663869 8 -300663869 9 1441808847 10 0 11 0
- 25: Text3: 1 1713719249 2 -540807320 3 -1770505351 4 -1767402448 5 -633458414 6 1441808847 7 625535078 8 -1093031312 9 -633458414 10 -1770505351 11 -1767402448
- 26: Text3: 1 -879836111 2 -540807320 3 818978692 4 -2006014845 5 1651914457 6 1441808847 7 -216986757 8 -1093031312 9 1651914457 10 818978692 11 -2006014845
- 27: Text3: 1 -1613547123 2 1095481056 3 990299165 4 1462324208 5 1805824471 6 1441808847 7 1654543304 8 -1093031312 9 1805824471 10 990299165 11 1462324208

| ID | WBS | Task | Type | Duration | Start | Finish | Predecessors | Complete | Remaining | Baseline start | Baseline finish | Baseline duration | Total slack | Constraint | Deadline | Resources | Work | Actual work | Text1 | Text2 |
| --- | --- | --- | --- | --- | --- | --- | --- | --- | --- | --- | --- | --- | --- | --- | --- | --- | --- | --- | --- | --- |
| 28 | 1.2.7 | **Transport services** |  | 22d | 2002-04-15 A | 2002-05-15 A |  | 100% |  |  |  |  |  |  | 2002-05-15 | kanmun; jagadeesh | 656h | 656h |  |  |
| 29 | 1.2.7.1 | **Basic Transport Services for transfering of messages across network** |  | 22d | 2002-04-15 A | 2002-05-15 A |  | 100% |  |  |  |  |  |  | 2002-05-15 | kanmun | 328h | 328h |  |  |
| 30 | 1.2.7.1.1 | To provide a transport facade for the BL and to implement send. |  | 5d | 2002-04-15 A | 2002-04-19 A | 4 | 100% |  |  |  |  |  |  | 2002-05-15 | jagadeesh | 40h | 40h | GNDB00007083 | BaseCMActivity |
| 31 | 1.2.7.1.2 | To provide the interface and implementations for the receive services for the BL. |  | 5d | 2002-04-22 A | 2002-04-26 A | 30 | 100% |  |  |  |  |  |  | 2002-05-15 | jagadeesh | 40h | 40h | GNDB00007085 | BaseCMActivity |
| 32 | 1.2.7.1.3 | To implement a bridge for the message to be sent to the SwiftMQ server. |  | 6d | 2002-04-29 A | 2002-05-07 A | 31 | 100% |  |  |  |  |  |  | 2002-05-15 | jagadeesh | 48h | 48h | GNDB00007087 | BaseCMActivity |
| 33 | 1.2.7.1.4 | To implement feature for receiving message from SwiftMQ server. |  | 4d | 2002-05-08 A | 2002-05-13 A | 32 | 100% |  |  |  |  |  |  | 2002-05-15 | jagadeesh | 32h | 32h | GNDB00007088 | BaseCMActivity |
| 34 | 1.2.7.1.5 | To integrate and test for the basic transport services. |  | 2d | 2002-05-14 A | 2002-05-15 A | 33 | 100% |  |  |  |  |  |  | 2002-05-15 | jagadeesh | 16h | 16h | GNDB00007222 | BaseCMActivity |
| 35 | 1.2.8 | **File access services - Basic File Access services** |  | 18d | 2002-04-15 A | 2002-05-09 A |  | 100% |  |  |  |  |  |  | 2002-05-15 | mathewyap | 360h | 360h |  |  |
| 36 | 1.2.8.1 | **Basic File Access services for managing access to files used by the system** |  | 18d | 2002-04-15 A | 2002-05-09 A |  | 100% |  |  |  |  |  |  | 2002-05-15 | mathewyap | 216h | 216h |  |  |
| 37 | 1.2.8.1.1 | Basic File Access services |  | 18d | 2002-04-15 A | 2002-05-09 A | 4 | 100% |  |  |  |  |  |  | 2002-05-15 | mathewyap [50%] | 72h | 72h | GNDB00007082 | BaseCMActivity |
| 38 | 1.2.9 | **Partner management - Create/Update/Delete Partner, Type and Group** |  | 10d | 2002-04-19 A | 2002-05-03 A |  | 100% |  | 2002-03-18 | 2002-03-27 | 8d |  |  | 2002-05-15 | menghua [80%] | 184h | 184h |  |  |
| 39 | 1.2.9.1 | **Partner Configuration/Management: allow create, update and delete** |  | 10d | 2002-04-19 A | 2002-05-03 A |  | 100% |  |  |  |  |  |  | 2002-05-15 | menghua | 120h | 120h |  |  |
| 40 | 1.2.9.1.1 | Partner Management in App service layer |  | 10d | 2002-04-19 A | 2002-05-03 A | 8 | 100% |  |  |  |  |  |  | 2002-05-15 | menghua [50%] | 40h | 40h | GNDB00007168 | BaseCMActivity |
| 41 | 1.2.10 | **Exception framework: provide consistent exception handling strategy** |  | 0.5d | 2002-05-06 A | 2002-05-06 A |  | 100% |  |  |  |  |  |  | 2002-05-15 | menghua | 6h | 6h |  |  |
| 42 | 1.2.10.1 | Refactor exception class hierarchy |  | 0.5d | 2002-05-06 A | 2002-05-06 A | 40 | 100% |  |  |  |  |  |  | 2002-05-15 | menghua [50%] | 2h | 2h | GNDB00007302 | BaseCMActivity |
| 43 | 1.2.11 | **Web Tier Framework** |  | 21d | 2002-04-15 A | 2002-05-14 A |  | 100% |  |  |  |  |  |  |  | andrewhill | 256h | 256h |  |  |
| 44 | 1.2.11.1 | Client Server Interface Wrapper API |  | 5d | 2002-04-15 A | 2002-04-19 A | 4 | 100% |  |  |  |  |  |  |  | andrewhill | 40h | 40h | GNDB00007517 | BaseCMActivity |
| 45 | 1.2.11.2 | P-Tier controller |  | 4d | 2002-04-22 A | 2002-05-03 A | 44 | 100% |  |  |  |  |  |  |  | andrewhill | 32h | 32h | GNDB00007518 | BaseCMActivity |
| 46 | 1.2.11.3 | P-Tier view components |  | 5d | 2002-05-06 A | 2002-05-10 A | 45 | 100% |  |  |  |  |  |  |  | andrewhill | 40h | 40h | GNDB00007519 | BaseCMActivity |
| 47 | 1.2.11.4 | Setup of development environment for P-Tier |  | 2d | 2002-05-13 A | 2002-05-14 A | 46 | 100% |  |  |  |  |  |  |  | andrewhill | 16h | 16h | GNDB00007520 | BaseCMActivity |
| 48 | 1.2.12 | Continuous integration, project configuration, design review |  | 22d | 2002-04-15 A | 2002-05-15 A | 4 | 100% |  | 2002-03-18 | 2002-03-27 | 8d |  | start no earlier than 2002-03-18 | 2002-05-15 | menghua [50%] | 88h | 88h |  |  |
| 49 | 1.2.13 | I1 integration |  | 2d | 2002-05-16 A | 2002-05-17 A | 48 | 100% |  | 2002-03-28 | 2002-03-29 | 2d |  |  | 2002-05-19 | menghua; soklay | 32h | 32h |  |  |
| 50 | 1.2.14 | User and Admin Guide Draft 1 |  | 43d | 2002-04-01 | 2002-05-31 | 2 |  |  |  |  |  | 0d |  | 2002-05-31 | AT | 344h |  |  |  |
| 51 | 1.2.15 | User and Admin Guide Review |  | 9d | 2002-05-20 | 2002-05-31 | 52 |  |  |  |  |  | 0d |  | 2002-05-31 | LT [50%] | 36h |  |  |  |
| 52 | 1.2.16 | I1 test preparation |  | 34d | 2002-04-01 A | 2002-05-17 A | 2 | 100% |  | 2002-03-11 | 2002-03-29 | 15d |  |  | 2002-05-19 | LT | 272h | 272h |  |  |
| 53 | 1.2.17 | I1 testing |  | 9d | 2002-05-20 A | 2002-05-31 | 52, 49 | 10% | 8.1d | 2002-04-01 | 2002-04-12 | 10d | 0d |  | 2002-05-31 | LT [50%]; DN | 108h | 10.8h |  |  |
| 54 | 1.2.18 | Resolve I1 defects |  | 9d | 2002-05-20 | 2002-05-31 | 49 |  |  |  |  |  | 0d |  | 2002-05-31 | menghua [20%]; soklay [20%]; huilinn [20%]; kanmun [20%]; mathewyap [20%]; jagadeesh [20%]; andrewhill [20%]; jianyu [20%] | 59.55h |  |  |  |
| 55 | 1.3 | I1 milestone | milestone | 0d | 2002-05-31 | 2002-05-31 | 50, 51, 53, 54 |  |  |  |  |  | 94d |  |  |  |  |  |  |  |

Notes:
- 29: Text3: 1 386456921 2 337058152 3 -757052952 4 -402507361 5 1702889998 6 1702889998 7 183465070 8 183465070 9 1441808847 10 0 11 0
- 30: Text3: 1 -892123141 2 -678359795 3 -426762856 4 -967930527 5 -1107602742 6 1441808847 7 -300663869 8 -1093031312 9 -1107602742 10 -426762856 11 -967930527 / Text4: JD,KM
- 31: Text3: 1 -766313446 2 -678359795 3 -1649516320 4 -1364741907 5 -1107602742 6 1441808847 7 -300663869 8 -1093031312 9 -1107602742 10 -1649516320 11 -1364741907 / Text4: JD,KM
- 32: Text3: 1 2040525454 2 -678359795 3 1699650327 4 -996164713 5 -1920263925 6 1441808847 7 1753237869 8 -1093031312 9 -1920263925 10 1699650327 11 -996164713 / Text4: JD,KM
- 33: Text3: 1 1158462521 2 -678359795 3 259428461 4 217760813 5 -633458414 6 1441808847 7 625535078 8 -1093031312 9 -633458414 10 259428461 11 217760813 / Text4: JD,JY
- 34: Text3: 1 1112922944 2 -678359795 3 -725307613 4 31765610 5 1651914457 6 1441808847 7 -216986757 8 -1093031312 9 1651914457 10 -725307613 11 31765610 / Text4: JD,JY
- 36: Text3: 1 27600614 2 2065544042 3 -757052952 4 697099871 5 1102017284 6 1102017284 7 -1713964104 8 -1713964104 9 1441808847 10 0 11 0
- 37: Text3: 1 1584847595 2 2065544042 3 -426762856 4 -631862492 5 1102017284 6 1441808847 7 1882257446 8 -1093031312 9 1102017284 10 -426762856 11 -631862492 / Text4: MY
- 38: Text4: MH
- 39: Text3: 1 1568622071 2 -2114048831 3 0 4 0 5 0 6 0 7 0 8 0 9 0 10 0 11 0
- 40: Text3: 1 -2117827916 2 -2114048831 3 -55771882 4 -848028691 5 -1107602742 6 1441808847 7 -1671202229 8 -1093031312 9 -1107602742 10 -55771882 11 -848028691
- 41: Text3: 1 -491864046 2 -2114048831 3 0 4 0 5 0 6 0 7 0 8 0 9 0 10 0 11 0
- 42: Text3: 1 1386457259 2 -2114048831 3 297771230 4 2036727566 5 791679663 6 1441808847 7 549147829 8 -1093031312 9 791679663 10 297771230 11 2036727566
- 43: Text3: 1 -1260823689 2 1095481056 3 0 4 0 5 0 6 0 7 0 8 0 9 0 10 0 11 0
- 44: Text3: 1 -790094643 2 1095481056 3 -426762856 4 -967930527 5 -1107602742 6 1441808847 7 -300663869 8 -1093031312 9 -1107602742 10 -426762856 11 -967930527
- 45: Text3: 1 1235890741 2 1095481056 3 -1649516320 4 -848028691 5 -633458414 6 1441808847 7 625535078 8 -1093031312 9 -633458414 10 -1649516320 11 -848028691
- 46: Text3: 1 -1334938299 2 1095481056 3 297771230 4 -405962962 5 -1107602742 6 1441808847 7 -300663869 8 -1093031312 9 -1107602742 10 297771230 11 -405962962
- 47: Text3: 1 -1910521611 2 1095481056 3 907588698 4 -299442348 5 1651914457 6 1441808847 7 -216986757 8 -1093031312 9 1651914457 10 907588698 11 -299442348
- 48: Text4: MH
- 49: Text4: MH,SL
- 50: Text4: AT
- 51: Text4: LT[50%]
- 52: Text4: LT
- 53: Text4: LT[50%],DN
- 54: Text4: MH[20%],AK[20%],SL[20%],HL[20%],KM[20%],MY[20%],JD[20%],AH[20%]

| ID | WBS | Task | Duration | Start | Finish | Predecessors | Complete | Remaining | Baseline start | Baseline finish | Baseline duration | Total slack | Free slack | Deadline | Resources | Work | Actual work | Text1 | Text2 | Text4 |
| --- | --- | --- | --- | --- | --- | --- | --- | --- | --- | --- | --- | --- | --- | --- | --- | --- | --- | --- | --- | --- |
| 56 | 1.4 | **Iteration 2** | 29d | 2002-05-20 A | 2002-06-28 |  | 87% | 3.86d |  |  |  | 103d |  |  |  | 2071.4h | 1699.71h |  |  |  |
| 57 | 1.4.1 | **Access control - User Access Policy** | 16.75d | 2002-05-20 A | 2002-06-12 |  | 44% | 9.34d |  |  |  | 0d |  | 2002-06-09 | soklay [33%]; huilinn [33%] | 339.4h | 150.17h |  |  |  |
| 58 | 1.4.1.1 | **Access Control: provide functionality, action and workspace based access control (continue from I1)** | 16.75d | 2002-05-20 A | 2002-06-12 |  | 44% | 9.34d |  |  |  | 0d |  | 2002-06-09 | soklay | 280h | 123.89h |  |  |  |
| 59 | 1.4.1.1.1 | Feature Management | 2d | 2002-05-20 A | 2002-05-21 A | 49 | 100% |  |  |  |  |  |  | 2002-06-09 | kanmun | 16h | 16h | GNDB00007114 | BaseCMActivity | KM |
| 60 | 1.4.1.1.2 | Access Rights assignment on Role | 3.5d | 2002-05-20 A | 2002-05-23 | 49 | 90% | 0.35d |  |  |  | 6.5d | 0d | 2002-06-09 | soklay | 28h | 25.2h | GNDB00007115 | BaseCMActivity | SL |
| 61 | 1.4.1.1.3 | ACL framework conforming to JAAS API (Base Service Layer) | 4d | 2002-05-23 | 2002-05-30 | 60 |  |  |  |  |  | 6.5d |  | 2002-06-09 | soklay | 32h |  | GNDB00007117 | BaseCMActivity | SL |
| 62 | 1.4.1.1.4 | Web front end for Role Management | 1.5d | 2002-05-24 | 2002-05-28 | 78 |  |  |  |  |  | 3.5d | 0d | 2002-06-09 | andrewhill | 12h |  | GNDB00007123 | BaseCMActivity | AH |
| 63 | 1.4.1.1.5 | Web front end for Assigning access rights to Roles | 3d | 2002-05-29 | 2002-05-31 | 62 |  |  |  |  |  | 3.5d | 0d | 2002-06-09 | andrewhill | 24h |  | GNDB00007125 | BaseCMActivity | AH |
| 64 | 1.4.1.1.6 | Web front end for assigning Roles to a User | 1d | 2002-06-03 | 2002-06-03 | 63 |  |  |  |  |  | 3.5d | 0d | 2002-06-09 | andrewhill | 8h |  | GNDB00007126 | BaseCMActivity | AH |
| 65 | 1.4.1.1.7 | Refactor to conform to standard and enhancement to action and event validation | 2.5d | 2002-06-07 A | 2002-06-11 | 70 | 90% | 0.25d |  |  |  | -2d | 0d | 2002-06-09 | soklay | 20h | 18h | GNDB00007931 | BaseCMActivity |  |
| 66 | 1.4.1.1.8 | Retrieve List of Users by Role | 0.75d | 2002-06-12 A | 2002-06-12 | 65 | 90% | 0.07d |  |  |  | -2.75d | 0d | 2002-06-09 | kanmun | 6h | 5.4h | GNDB00008059 | BaseCMActivity |  |
| 67 | 1.4.2 | **Access control - User Authentication** | 6d | 2002-05-30 A | 2002-06-07 |  | 92% | 0.46d |  |  |  | 0.5d |  | 2002-06-09 |  | 100h | 92.31h |  |  |  |
| 68 | 1.4.2.1 | **User Authentication: handle user login/logout (continue from I1)** | 6d | 2002-05-30 A | 2002-06-07 |  | 92% | 0.46d |  |  |  | 0.5d |  | 2002-06-09 | soklay | 100h | 92.31h |  |  |  |
| 69 | 1.4.2.1.1 | Incorporate Session for Login/Logout | 4d | 2002-05-30 A | 2002-06-05 A | 61 | 100% |  |  |  |  |  |  | 2002-06-09 | soklay | 32h | 32h | GNDB00007310 | BaseCMActivity |  |
| 70 | 1.4.2.1.2 | Assign Role Principals to authenticated User. | 2d | 2002-06-05 A | 2002-06-07 A | 69 | 100% |  |  |  |  |  |  | 2002-06-09 | soklay | 16h | 16h | GNDB00007311 | BaseCMActivity |  |
| 71 | 1.4.2.1.3 | Web front end for User Logout | 0.5d | 2002-06-04 | 2002-06-04 | 64 |  |  |  |  |  | 3.5d |  | 2002-06-09 | andrewhill | 4h |  | GNDB00007714 | BaseCMActivity |  |
| 72 | 1.4.3 | **Web Tier Framework (continue from I1)** | 8d | 2002-06-04 A | 2002-06-14 A |  | 100% |  |  |  |  |  |  |  |  | 64h | 64h |  |  |  |
| 73 | 1.4.3.1 | Refactor view DOM implementation | 4d | 2002-06-04 A | 2002-06-10 A | 71 | 100% |  |  |  |  |  |  | 2002-06-09 | andrewhill | 32h | 32h | GNDB00007759 | BaseCMActivity |  |
| 74 | 1.4.3.2 | P-Tier framework modifications | 4d | 2002-06-10 A | 2002-06-14 A | 73 | 100% |  |  |  |  |  |  | 2002-06-09 | andrewhill | 32h | 32h | GNDB00007760 | BaseCMActivity |  |
| 75 | 1.4.4 | **Partner management - Create/Update/Delete Partner, Type and Group** | 6d | 2002-05-20 A | 2002-05-28 |  | 38% | 3.75d | 2002-03-18 | 2002-03-27 | 8d | 8d |  | 2002-06-09 | menghua [80%] | 126.4h | 44.4h |  |  | MH |
| 76 | 1.4.4.1 | **Partner Configuration/Management: allow create, update and delete** | 6d | 2002-05-20 A | 2002-05-28 |  | 38% | 3.75d |  |  |  | 8d |  | 2002-06-09 | menghua | 88h | 30h |  |  |  |
| 77 | 1.4.4.1.1 | Partner Management in GTAS | 6d | 2002-05-20 A | 2002-05-28 | 49 | 50% | 3d |  |  |  | 8d |  | 2002-06-09 | menghua [50%] | 24h | 12h | GNDB00007169 | BaseCMActivity |  |
| 78 | 1.4.4.1.2 | Web Frontend for Partner Configuration | 2d | 2002-05-22 | 2002-05-24 | 13 |  |  |  |  |  | 3.5d | 0d | 2002-06-09 | andrewhill | 16h |  | GNDB00007170 | BaseCMActivity |  |
| 79 | 1.4.5 | **Session Management (continue from I1)** | 18.25d | 2002-05-20 A | 2002-06-14 |  | 28% | 13.09d |  |  |  | 0d |  |  |  | 36h | 15.6h |  |  |  |
| 80 | 1.4.5.1 | Session HouseKeeping | 5.4d | 2002-05-20 A | 2002-06-12 | 49 | 11% | 4.8d |  |  |  | -13.4d | 0d | 2002-06-09 | huilinn | 24h | 4.8h | GNDB00007489 | BaseCMActivity |  |
| 81 | 1.4.5.2 | Hook session into GridTalkClientControllerBean & actions | 1.5d | 2002-06-12 A | 2002-06-14 | 66 | 90% | 0.15d |  |  |  | -4.25d | 0d | 2002-06-09 | soklay | 12h | 10.8h | GNDB00007982 | BaseCMActivity |  |

Notes:
- 58: Text3: 1 1358764231 2 -540807320 3 -837516616 4 -662192686 5 1216082954 6 1216082954 7 1750817489 8 1750817489 9 1441808847 10 0 11 0
- 59: Text3: 1 567387808 2 337058152 3 1154312536 4 -1846709743 5 1651914457 6 -1303619924 7 -216986757 8 1035887629 9 731740575 10 1154312536 11 0
- 60: Text3: 1 737257306 2 -540807320 3 1154312536 4 -954167925 5 1540553238 6 814369599 7 -1372302506 8 164140991 9 1561608223 10 1154312536 11 0
- 61: Text3: 1 -653900559 2 -540807320 3 1633125951 4 -308680376 5 -633458414 6 -633458414 7 625535078 8 625535078 9 1441808847 10 0 11 0
- 62: Text3: 1 84483173 2 1095481056 3 -2088002234 4 1844992475 5 -1745448935 6 -1745448935 7 -334408661 8 -334408661 9 1441808847 10 0 11 0
- 63: Text3: 1 -60448667 2 1095481056 3 -1193786734 4 1348709841 5 -1641933033 6 -1641933033 7 944625886 8 944625886 9 1441808847 10 0 11 0
- 64: Text3: 1 1321083945 2 1095481056 3 1247545172 4 1891530531 5 1702889998 6 1702889998 7 -525321833 8 -525321833 9 1441808847 10 0 11 0
- 65: Text3: 1 -1817771492 2 -540807320 3 0 4 0 5 0 6 0 7 0 8 0 9 0 10 0 11 0
- 66: Text3: 1 1243432368 2 337058152 3 0 4 0 5 0 6 0 7 0 8 0 9 0 10 0 11 0
- 68: Text3: 1 -1982894828 2 -540807320 3 326014504 4 -1437441840 5 -1107602742 6 -1107602742 7 -300663869 8 -300663869 9 1441808847 10 0 11 0
- 69: Text3: 1 -857758644 2 -540807320 3 1273946876 4 798501059 5 -633458414 6 -633458414 7 625535078 8 625535078 9 1441808847 10 0 11 0
- 70: Text3: 1 -1824909208 2 -540807320 3 -1980816521 4 728627454 5 1651914457 6 1651914457 7 -216986757 8 -216986757 9 1441808847 10 0 11 0
- 71: Text3: 1 -1152925404 2 1095481056 3 -1467999187 4 -1067826179 5 -1603213553 6 -1603213553 7 549147829 8 549147829 9 1441808847 10 0 11 0
- 73: Text3: 1 862074626 2 1095481056 3 1714243657 4 138361927 5 -633458414 6 -633458414 7 625535078 8 625535078 9 1441808847 10 0 11 0
- 74: Text3: 1 -1428160689 2 1095481056 3 -1370998797 4 30710845 5 -633458414 6 -633458414 7 625535078 8 625535078 9 1441808847 10 0 11 0
- 76: Text3: 1 1568622071 2 -2114048831 3 0 4 0 5 0 6 0 7 0 8 0 9 0 10 0 11 0
- 77: Text3: 1 1643639439 2 -2114048831 3 1154312536 4 1844992475 5 -1641933033 6 -1641933033 7 1753237869 8 1753237869 9 1441808847 10 0 11 0
- 78: Text3: 1 -140731226 2 1095481056 3 -1902777087 4 637310706 5 1651914457 6 1651914457 7 -216986757 8 -216986757 9 1441808847 10 0 11 0
- 80: Text3: 1 -851404031 2 -1921325360 3 1154312536 4 -1846709743 5 1651914457 6 -152722536 7 -216986757 8 659392398 9 1598343018 10 1154312536 11 0
- 81: Text3: 1 -233139670 2 -540807320 3 0 4 0 5 0 6 0 7 0 8 0 9 0 10 0 11 0

| ID | WBS | Task | Type | Duration | Start | Finish | Predecessors | Complete | Remaining | Baseline start | Baseline finish | Baseline duration | Total slack | Free slack | Constraint | Deadline | Resources | Work | Actual work | Text1 | Text2 |
| --- | --- | --- | --- | --- | --- | --- | --- | --- | --- | --- | --- | --- | --- | --- | --- | --- | --- | --- | --- | --- | --- |
| 82 | 1.4.6 | **Channel Management** |  | 7d | 2002-06-03 A | 2002-06-11 |  | 77% | 1.6d |  |  |  | 116d |  |  |  | kanmun | 112h | 86.4h | GNDB00008026 | BaseCMActivity |
| 83 | 1.4.6.1 | Node management analysis |  | 5d | 2002-06-03 A | 2002-06-07 A | 59 | 100% |  |  |  |  |  |  |  |  | kanmun | 40h | 40h |  |  |
| 84 | 1.4.6.2 | To manage Channel Entity. |  | 2d | 2002-06-10 A | 2002-06-11 | 83 | 20% | 1.6d |  |  |  | 116d |  |  |  | kanmun | 16h | 3.2h | GNDB00008027 | BaseCMActivity |
| 85 | 1.4.7 | **XML Services: provide generic resusable services to manipulate XML document** |  | 5d | 2002-05-20 A | 2002-05-24 |  | 95% | 0.25d |  |  |  | 9d |  |  | 2002-06-09 | hansing | 48h | 45.6h |  |  |
| 86 | 1.4.7.1 | Clean up XML module |  | 1.5d | 2002-05-20 A | 2002-05-23 | 49 | 90% | 0.15d |  |  |  | 10.5d |  |  | 2002-06-09 | hansing | 12h | 10.8h | GNDB00007530 | BaseCMActivity |
| 87 | 1.4.7.2 | Move common classes in XML module to Framework module |  | 1d | 2002-05-23 A | 2002-05-24 A | 86 | 100% |  |  |  |  |  |  |  | 2002-06-09 | hansing | 8h | 8h | GNDB00007532 | BaseCMActivity |
| 88 | 1.4.7.3 | Expose all usable services in XML module |  | 0.5d | 2002-05-24 A | 2002-05-24 A | 87 | 100% |  |  |  |  |  |  |  | 2002-06-09 | hansing | 4h | 4h | GNDB00007533 | BaseCMActivity |
| 89 | 1.4.8 | Document Management Analysis |  | 9d | 2002-05-28 A | 2002-06-07 A | 88 | 100% |  |  |  |  |  |  |  | 2002-06-09 | hansing | 72h | 72h | GNDB00007445 | BaseCMActivity |
| 90 | 1.4.9 | **Configuration Services: provide consistent access to configuration information** |  | 3d | 2002-05-20 A | 2002-05-22 |  | 99% | 0d |  |  |  | 0d |  |  | 2002-06-09 | jagadeesh | 48h | 32h |  |  |
| 91 | 1.4.9.1 | Configuration services |  | 3d | 2002-05-20 A | 2002-05-22 A | 49 | 100% |  |  |  |  |  |  |  |  | jagadeesh | 24h | 24h | GNDB00007715 | BaseCMActivity |
| 92 | 1.4.10 | **Security Services** |  | 8d | 2002-05-23 A | 2002-06-04 |  | 96% | 0.3d |  |  |  | 3d |  |  | 2002-06-09 | jagadeesh | 128h | 123.2h | GNDB00007447 | BaseCMActivity |
| 93 | 1.4.10.1 | Security module analysis |  | 5d | 2002-05-23 A | 2002-05-30 A | 91 | 100% |  |  |  |  |  |  |  |  | jagadeesh | 40h | 40h |  |  |
| 94 | 1.4.10.2 | Security Service - Decrypt and verify the User Document. |  | 1.5d | 2002-05-31 A | 2002-06-03 A | 93 | 100% |  |  |  |  |  |  |  |  | jagadeesh | 12h | 12h | GNDB00007926 | BaseCMActivity |
| 95 | 1.4.10.3 | Security Services - Encrypt and Sign the user document |  | 1.5d | 2002-06-03 A | 2002-06-04 | 94 | 80% | 0.3d |  |  |  | 3d |  |  |  | jagadeesh | 12h | 9.6h | GNDB00007925 | BaseCMActivity |
| 96 | 1.4.11 | **Feedback channels/services for transport** |  | 16d | 2002-05-20 A | 2002-06-11 |  | 95% | 0.82d |  |  |  | 0d |  |  | 2002-06-09 | jianyu | 432h | 408.43h |  |  |
| 97 | 1.4.11.1 | Provide feedback channels from the Bridge to the Transport module. |  | 2d | 2002-05-20 A | 2002-05-21 A | 49 | 100% |  |  |  |  |  |  |  | 2002-06-09 | jianyu | 16h | 16h | GNDB00007560 | BaseCMActivity |
| 98 | 1.4.11.2 | Transport to BL Feedback Channel. |  | 2d | 2002-05-30 A | 2002-05-31 A | 100 | 100% |  |  |  |  |  |  |  | 2002-06-09 | jianyu | 16h | 16h | GNDB00007580 | BaseCMActivity |
| 99 | 1.4.11.3 | Integration of the transport feedback channel. |  | 2d | 2002-06-03 A | 2002-06-04 A | 98 | 100% |  |  |  |  |  |  |  | 2002-06-09 | jianyu | 16h | 16h | GNDB00007583 | BaseCMActivity |
| 100 | 1.4.11.4 | Refactor of transport module to use Framework Services |  | 5d | 2002-05-22 A | 2002-05-29 A | 97 | 100% |  |  |  |  |  |  |  |  | jianyu | 40h | 40h | GNDB00007880 | BaseCMActivity |
| 101 | 1.4.11.5 | **Basic GridForm Implementation** |  | 16d | 2002-05-20 A | 2002-06-11 |  | 92% | 1.26d |  |  |  | 0d |  |  | 2002-06-09 | jaredlow | 216h | 199.03h |  |  |
| 102 | 1.4.11.5.1 | Creating Structs Actions |  | 5d | 2002-05-20 A | 2002-05-24 | 49 | 90% | 0.5d |  |  |  | 8d |  |  | 2002-06-09 | danieldcotta | 40h | 36h | GNDB00007585 | BaseCMActivity |
| 103 | 1.4.11.5.2 | Reading of Layout Definition File |  | 5d | 2002-05-28 A | 2002-06-03 A | 102 | 100% |  |  |  |  |  |  |  | 2002-06-09 | danieldcotta | 40h | 40h | GNDB00007586 | BaseCMActivity |
| 104 | 1.4.11.5.3 | Interfacing with the GTAS client controller |  | 5d | 2002-06-04 A | 2002-06-11 | 103 | 80% | 1d |  |  |  | -3d | 0d |  | 2002-06-09 | danieldcotta | 40h | 32h | GNDB00007587 | BaseCMActivity |
| 105 | 1.4.11.5.4 | Create the GridForm Manager |  | 1.5d | 2002-05-20 A | 2002-05-21 | 49 | 90% | 0.15d |  |  |  | 12.5d |  |  | 2002-06-09 | jaredlow | 12h | 10.8h | GNDB00007603 | BaseCMActivity |
| 106 | 1.4.11.5.5 | Create the Definition and Template entities |  | 1.5d | 2002-05-21 A | 2002-05-22 A | 105 | 100% |  |  |  |  |  |  |  | 2002-06-09 | jaredlow | 12h | 12h | GNDB00007604 | BaseCMActivity |
| 107 | 1.4.11.5.6 | Create the helper classes |  | 1.5d | 2002-05-23 A | 2002-05-24 A | 106 | 100% |  |  |  |  |  |  |  | 2002-06-09 | jaredlow | 12h | 12h | GNDB00007737 | BaseCMActivity |
| 108 | 1.4.11.5.7 | Create the Events and Actions in GTAS |  | 1.5d | 2002-05-24 A | 2002-06-07 A | 107 | 100% |  |  |  |  |  |  |  | 2002-06-09 | jaredlow | 12h | 12h | GNDB00007742 | BaseCMActivity |
| 109 | 1.4.12 | Continuous integration, project configuration, design review |  | 14d | 2002-05-20 A | 2002-06-07 A | 49 | 100% |  | 2002-03-18 | 2002-03-27 | 8d |  |  | start no earlier than 2002-03-18 | 2002-06-09 | menghua [50%] | 56h | 56h |  |  |
| 110 | 1.4.13 | I2 integration |  | 8d | 2002-06-10 A | 2002-06-19 A | 109, 89, 108 | 100% |  | 2002-03-28 | 2002-03-29 | 2d |  |  |  | 2002-06-19 | menghua; soklay | 128h | 128h |  |  |
| 111 | 1.4.14 | User and Admin Guide Draft 2 |  | 20d | 2002-06-03 A | 2002-06-28 A | 55 | 100% |  |  |  |  |  |  |  | 2002-06-28 | AT | 160h | 160h |  |  |
| 112 | 1.4.15 | User and Admin Guide Review |  | 4d | 2002-06-20 A | 2002-06-28 A | 113, 110 | 100% |  |  |  |  |  |  |  | 2002-06-28 | DN [50%] | 16h | 16h |  |  |
| 113 | 1.4.16 | I2 test preparation |  | 13d | 2002-06-03 A | 2002-06-19 A | 55 | 100% |  | 2002-03-11 | 2002-03-29 | 15d |  |  |  | 2002-06-19 | BS | 104h | 104h |  |  |
| 114 | 1.4.17 | I2 testing |  | 7d | 2002-06-20 A | 2002-06-28 A | 110 | 100% |  | 2002-04-01 | 2002-04-12 | 10d |  |  | start no earlier than 2002-06-12 | 2002-06-28 | DN; BS [50%] | 52h | 52h |  |  |
| 115 | 1.4.18 | Resolve I2 defects |  | 7d | 2002-06-19 A | 2002-06-28 A | 110 | 100% |  |  |  |  |  |  |  | 2002-06-28 | menghua [20%]; soklay [20%]; huilinn [20%]; kanmun [20%]; mathewyap [20%]; jagadeesh [20%]; hansing [20%]; andrewhill [20%] | 49.6h | 49.6h |  |  |
| 116 | 1.5 | I2 milestone | milestone | 0d | 2002-06-28 | 2002-06-28 | 114, 111, 112, 115 |  |  |  |  |  | 23d | 0d |  |  |  |  |  |  |  |

Notes:
- 82: Text3: 1 -1035544564 2 337058152 3 0 4 0 5 0 6 0 7 0 8 0 9 0 10 0 11 0
- 84: Text3: 1 -2022553489 2 337058152 3 0 4 0 5 0 6 0 7 0 8 0 9 0 10 0 11 0
- 85: Text3: 1 1507519232 2 -692353760 3 0 4 0 5 0 6 0 7 0 8 0 9 0 10 0 11 0
- 86: Text3: 1 827660931 2 -692353760 3 1154312536 4 -954167925 5 -1745448935 6 1204613228 7 -334408661 8 1963364510 9 438481037 10 1154312536 11 0
- 87: Text3: 1 -1277315982 2 -692353760 3 1633125951 4 637310706 5 1702889998 6 1702889998 7 -525321833 8 -525321833 9 1441808847 10 0 11 0
- 88: Text3: 1 869633783 2 -692353760 3 -2088002234 4 2009381205 5 -1603213553 6 -1603213553 7 549147829 8 549147829 9 1441808847 10 0 11 0
- 89: Text3: 1 -1366364696 2 -692353760 3 1461332396 4 2035668825 5 1102017284 6 1102017284 7 -1713964104 8 -1713964104 9 1441808847 10 0 11 0
- 90: Text3: 1 -1445651119 2 -678359795 3 1154312536 4 2061158674 5 -1641933033 6 1441808847 7 944625886 8 -1093031312 9 -1641933033 10 1154312536 11 2061158674
- 91: Text3: 1 -1252865867 2 -678359795 3 1154312536 4 2061158674 5 -1641933033 6 -1641933033 7 944625886 8 944625886 9 1441808847 10 0 11 0
- 92: Text3: 1 -392807917 2 -678359795 3 -1342516645 4 2035668825 5 -95823504 6 -95823504 7 1463790062 8 1463790062 9 1441808847 10 0 11 0
- 94: Text3: 1 1912785073 2 -678359795 3 0 4 0 5 0 6 0 7 0 8 0 9 0 10 0 11 0
- 95: Text3: 1 -1783935832 2 -678359795 3 0 4 0 5 0 6 0 7 0 8 0 9 0 10 0 11 0
- 96: Text3: 1 -1931626713 2 -1815172637 3 0 4 0 5 0 6 0 7 0 8 0 9 0 10 0 11 0
- 97: Text3: 1 1939212280 2 -1815172637 3 1154312536 4 -1846709743 5 1651914457 6 1651914457 7 -216986757 8 -216986757 9 1441808847 10 0 11 0
- 98: Text3: 1 2051969938 2 -1815172637 3 1294387490 4 1844992475 5 1651914457 6 1651914457 7 -216986757 8 -216986757 9 1441808847 10 0 11 0
- 99: Text3: 1 49632129 2 -1815172637 3 -1193786734 4 -1079916817 5 1651914457 6 1651914457 7 -216986757 8 -216986757 9 1441808847 10 0 11 0
- 100: Text3: 1 -188541875 2 -1815172637 3 1786895782 4 1348709841 5 1702889998 6 1702889998 7 -525321833 8 -525321833 9 1441808847 10 0 11 0
- 101: Text3: 1 855404210 2 -948063909 3 0 4 0 5 0 6 0 7 0 8 0 9 0 10 0 11 0
- 102: Text3: 1 371104524 2 646240678 3 1154312536 4 2009381205 5 -1107602742 6 -1603213553 7 -300663869 8 549147829 9 801019858 10 1154312536 11 0
- 103: Text3: 1 1557132846 2 646240678 3 1461332396 4 1891530531 5 -1107602742 6 -1107602742 7 -300663869 8 -300663869 9 1441808847 10 0 11 0
- 104: Text3: 1 -345209217 2 646240678 3 -1467999187 4 -1245349666 5 -1107602742 6 -1107602742 7 -300663869 8 -300663869 9 1441808847 10 0 11 0
- 105: Text3: 1 649906048 2 -948063909 3 1154312536 4 -1009427018 5 -1745448935 6 1204613228 7 -334408661 8 1963364510 9 438481037 10 1154312536 11 0
- 106: Text3: 1 864941443 2 -948063909 3 1705137666 4 2061158674 5 -1745448935 6 1441808847 7 -334408661 8 -1093031312 9 -1745448935 10 1705137666 11 2061158674
- 107: Text3: 1 -1540067608 2 -948063909 3 -1342516645 4 637310706 5 -1745448935 6 -1745448935 7 -334408661 8 -334408661 9 1441808847 10 0 11 0
- 108: Text3: 1 -1676382764 2 -948063909 3 -2088002234 4 2035668825 5 -1745448935 6 -1745448935 7 -334408661 8 -334408661 9 1441808847 10 0 11 0
- 109: Text4: MH[20%]
- 110: Text4: MH,SL
- 111: Text4: AT
- 113: Text4: LT
- 115: Text4: MH[20%],AK[20%],SL[20%],HL[20%],KM[20%],MY[20%],JD[20%],AH[20%],HS[20%]

| ID | WBS | Task | Duration | Start | Finish | Predecessors | Complete | Constraint | Resources | Work | Actual work | Text1 | Text2 |
| --- | --- | --- | --- | --- | --- | --- | --- | --- | --- | --- | --- | --- | --- |
| 117 | 1.6 | **Iteration 3** | 40d | 2002-06-10 A | 2002-08-02 A |  | 100% |  |  | 1582.8h | 1582.8h |  |  |
| 118 | 1.6.1 | **File splitting and auto/partial resume.** | 6d | 2002-06-10 A | 2002-06-17 A |  | 100% |  | jianyu | 96h | 96h |  |  |
| 119 | 1.6.1.1 | To invoke the file module to zip/unzip files and split/merge the zipped files into appropriate size. | 2d | 2002-06-10 A | 2002-06-11 A | 99 | 100% | start no earlier than 2002-06-10 | jianyu | 16h | 16h | GNDB00007590 | BaseCMActivity |
| 120 | 1.6.1.2 | To send/receive the packet using the transport-to-transport feedback channel. | 2d | 2002-06-12 A | 2002-06-13 A | 119 | 100% |  | jianyu | 16h | 16h | GNDB00007592 | BaseCMActivity |
| 121 | 1.6.1.3 | To allow resume sending. | 2d | 2002-06-14 A | 2002-06-17 A | 120 | 100% |  | jianyu | 16h | 16h | GNDB00007593 | BaseCMActivity |
| 122 | 1.6.2 | **Abstraction/Framework Refactoring** | 13.75d | 2002-06-20 A | 2002-07-09 A |  | 100% |  | soklay | 60h | 60h | GNDB00008427 | BaseCMActivity |
| 123 | 1.6.2.1 | Abstraction for Action classes in GTAS | 1.5d | 2002-06-20 A | 2002-06-21 A | 110 | 100% |  | soklay | 12h | 12h | GNDB00008430 | BaseCMActivity |
| 124 | 1.6.2.2 | Refactor GTAS User actions | 0.5d | 2002-06-21 A | 2002-06-21 A | 123 | 100% |  | soklay | 4h | 4h | GNDB00008433 | BaseCMActivity |
| 125 | 1.6.2.3 | Refactor GTAS AccessControl actions | 0.75d | 2002-07-08 A | 2002-07-08 A | 124 | 100% |  | soklay | 6h | 6h | GNDB00008434 | BaseCMActivity |
| 126 | 1.6.2.4 | Enhance Key generation | 1d | 2002-07-08 A | 2002-07-09 A | 125 | 100% |  | soklay | 8h | 8h | GNDB00008435 | BaseCMActivity |
| 127 | 1.6.3 | **Certificate Management** | 10d | 2002-06-20 A | 2002-07-03 A |  | 100% |  | jagadeesh | 80h | 80h | GNDB00008598 | BaseCMActivity |
| 128 | 1.6.3.1 | Data Model for Certificate Management Services. | 1d | 2002-06-20 A | 2002-06-20 A | 110 | 100% |  | jagadeesh | 8h | 8h | GNDB00008601 | BaseCMActivity |
| 129 | 1.6.3.2 | Services for Adding/Deleting Certificate. | 1.5d | 2002-06-21 A | 2002-07-01 A | 128 | 100% |  | jagadeesh | 12h | 12h | GNDB00008602 | BaseCMActivity |
| 130 | 1.6.3.3 | Services for Adding/Deleting Private Keys. | 1.5d | 2002-07-01 A | 2002-07-02 A | 129 | 100% |  | jagadeesh | 12h | 12h | GNDB00008604 | BaseCMActivity |
| 131 | 1.6.3.4 | Creating a Provider for RSA CertJ. | 1d | 2002-07-03 A | 2002-07-03 A | 130 | 100% |  | jagadeesh | 8h | 8h | GNDB00008605 | BaseCMActivity |
| 132 | 1.6.4 | **Web Tier Framework (continue from I2)** | 3d | 2002-06-20 A | 2002-06-24 A |  | 100% |  |  | 24h | 24h |  |  |
| 133 | 1.6.4.1 | Template and Navigator Framework | 3d | 2002-06-20 A | 2002-06-24 A | 110 | 100% |  | andrewhill | 24h | 24h | GNDB00008806 | BaseCMActivity |
| 134 | 1.6.5 | **Channel Management (continue from I2)** | 10.5d | 2002-06-20 A | 2002-07-04 A |  | 100% |  |  | 68h | 68h |  |  |
| 135 | 1.6.5.1 | To create a JMS Controller that helps the operation of a JMS Channel. | 1.5d | 2002-06-20 A | 2002-06-21 A | 110 | 100% |  | kanmun | 12h | 12h | GNDB00008028 | BaseCMActivity |
| 136 | 1.6.5.2 | Basic SwiftMQ Channel Manager | 4d | 2002-06-21 A | 2002-07-04 A | 135 | 100% |  | kanmun | 32h | 32h | GNDB00008029 | BaseCMActivity |
| 137 | 1.6.5.3 | User Interface to configure channel and communication information | 3d | 2002-06-25 A | 2002-06-27 A | 133 | 100% |  | andrewhill | 24h | 24h | GNDB00008563 | BaseCMActivity |
| 138 | 1.6.6 | **GridForm File Management** | 6d | 2002-06-20 A | 2002-06-27 A |  | 100% |  | danieldcotta | 96h | 96h | GNDB00008660 | BaseCMActivity |
| 139 | 1.6.6.1 | Upload file to server | 4d | 2002-06-20 A | 2002-06-25 A | 110 | 100% |  | danieldcotta | 32h | 32h | GNDB00008663 | BaseCMActivity |
| 140 | 1.6.6.2 | Download file from server | 2d | 2002-06-26 A | 2002-06-27 A | 139 | 100% |  | danieldcotta | 16h | 16h | GNDB00008667 | BaseCMActivity |

Notes:
- 118: Text3: 1 1529550865 2 -1815172637 3 0 4 0 5 0 6 0 7 0 8 0 9 0 10 0 11 0
- 119: Text3: 1 -17308521 2 -1815172637 3 1247545172 4 -1839043494 5 1651914457 6 1651914457 7 -216986757 8 -216986757 9 1441808847 10 0 11 0
- 120: Text3: 1 -1460584820 2 -1815172637 3 1195538195 4 -1768440729 5 1651914457 6 1651914457 7 -216986757 8 -216986757 9 1441808847 10 0 11 0
- 121: Text3: 1 -940205418 2 -1815172637 3 1136109358 4 1510413280 5 1651914457 6 1651914457 7 -216986757 8 -216986757 9 1441808847 10 0 11 0
- 122: Text3: 1 -514706477 2 -540807320 3 0 4 0 5 0 6 0 7 0 8 0 9 0 10 0 11 0
- 123: Text3: 1 -782156682 2 -540807320 3 0 4 0 5 0 6 0 7 0 8 0 9 0 10 0 11 0
- 124: Text3: 1 -2026669072 2 -540807320 3 0 4 0 5 0 6 0 7 0 8 0 9 0 10 0 11 0
- 125: Text3: 1 1807147544 2 -540807320 3 0 4 0 5 0 6 0 7 0 8 0 9 0 10 0 11 0
- 126: Text3: 1 -1871507385 2 -540807320 3 0 4 0 5 0 6 0 7 0 8 0 9 0 10 0 11 0
- 127: Text3: 1 -1481318632 2 -678359795 3 0 4 0 5 0 6 0 7 0 8 0 9 0 10 0 11 0
- 128: Text3: 1 -1411421368 2 -678359795 3 0 4 0 5 0 6 0 7 0 8 0 9 0 10 0 11 0
- 129: Text3: 1 -2078884645 2 -678359795 3 0 4 0 5 0 6 0 7 0 8 0 9 0 10 0 11 0
- 130: Text3: 1 689321123 2 -678359795 3 0 4 0 5 0 6 0 7 0 8 0 9 0 10 0 11 0
- 131: Text3: 1 -750431890 2 -678359795 3 0 4 0 5 0 6 0 7 0 8 0 9 0 10 0 11 0
- 133: Text3: 1 665842026 2 1095481056 3 0 4 0 5 0 6 0 7 0 8 0 9 0 10 0 11 0
- 135: Text3: 1 -2125761657 2 337058152 3 0 4 0 5 0 6 0 7 0 8 0 9 0 10 0 11 0
- 136: Text3: 1 251708444 2 337058152 3 0 4 0 5 0 6 0 7 0 8 0 9 0 10 0 11 0
- 137: Text3: 1 806764650 2 1095481056 3 0 4 0 5 0 6 0 7 0 8 0 9 0 10 0 11 0
- 138: Text3: 1 780357447 2 646240678 3 0 4 0 5 0 6 0 7 0 8 0 9 0 10 0 11 0
- 139: Text3: 1 -1987141066 2 646240678 3 0 4 0 5 0 6 0 7 0 8 0 9 0 10 0 11 0
- 140: Text3: 1 1198678275 2 646240678 3 0 4 0 5 0 6 0 7 0 8 0 9 0 10 0 11 0

| ID | WBS | Task | Type | Duration | Start | Finish | Predecessors | Complete | Remaining | Baseline start | Baseline finish | Baseline duration | Total slack | Free slack | Constraint | Deadline | Resources | Work | Actual work | Text1 | Text2 |
| --- | --- | --- | --- | --- | --- | --- | --- | --- | --- | --- | --- | --- | --- | --- | --- | --- | --- | --- | --- | --- | --- |
| 141 | 1.6.7 | **Mapper Module** |  | 19.5d | 2002-06-20 A | 2002-07-17 A |  | 100% |  |  |  |  |  |  |  |  | hansing | 340h | 340h | GNDB00008705 | BaseCMActivity |
| 142 | 1.6.7.1 | Manage Mapping Files |  | 2.5d | 2002-06-20 A | 2002-06-24 A | 110 | 100% |  |  |  |  |  |  |  |  | hansing | 20h | 20h | GNDB00008706 | BaseCMActivity |
| 143 | 1.6.7.2 | Manage Mapping Rules |  | 3.5d | 2002-06-24 A | 2002-06-27 A | 142 | 100% |  |  |  |  |  |  |  |  | hansing | 28h | 28h | GNDB00008707 | BaseCMActivity |
| 144 | 1.6.7.3 | Manage GridTalk Mapping Rules |  | 3.5d | 2002-06-28 A | 2002-07-03 A | 143 | 100% |  |  |  |  |  |  |  |  | hansing | 28h | 28h | GNDB00008708 | BaseCMActivity |
| 145 | 1.6.7.4 | UI For Mapper Module |  | 3.5d | 2002-06-28 A | 2002-07-03 A | 137 | 100% |  |  |  |  |  |  |  |  | andrewhill | 28h | 28h | GNDB00009021 | BaseCMActivity |
| 146 | 1.6.7.5 | User Interface to confiure GridTalk Mapping Rules |  | 10d | 2002-07-03 A | 2002-07-17 A | 145 | 100% |  |  |  |  |  |  |  |  | andrewhill | 80h | 80h | GNDB00008936 | BaseCMActivity |
| 147 | 1.6.7.6 | Mapping Services at App Service layer |  | 1d | 2002-07-03 A | 2002-07-04 A | 144 | 100% |  |  |  |  |  |  |  |  | hansing | 8h | 8h | GNDB00009084 | BaseCMActivity |
| 148 | 1.6.8 | **Streamline project build process towards property file driven** |  | 14.75d | 2002-06-20 A | 2002-07-10 A |  | 100% |  |  |  |  |  |  |  |  | menghua | 166h | 166h | GNDB00008998 | BaseCMActivity |
| 149 | 1.6.8.1 | GTAS,User,ACL,Session: implement required changes for streamlined build process |  | 1d | 2002-07-09 A | 2002-07-10 A | 126 | 100% |  |  |  |  |  |  |  |  | soklay | 8h | 8h | GNDB00009000 | BaseCMActivity |
| 150 | 1.6.8.2 | Modify projects for new build process (AMH) |  | 1d | 2002-06-20 A | 2002-06-20 A | 110 | 100% |  |  |  |  |  |  |  |  | menghua | 8h | 8h | GNDB00009001 | BaseCMActivity |
| 151 | 1.6.8.3 | Transport, Channel: implement required changes to support streamlined |  | 1d | 2002-07-04 A | 2002-07-05 A | 136 | 100% |  |  |  |  |  |  |  |  | kanmun | 8h | 8h | GNDB00009003 | BaseCMActivity |
| 152 | 1.6.8.4 | Modify projects for new build process (DDJ) |  | 1d | 2002-06-28 A | 2002-06-28 A | 140 | 100% |  |  |  |  |  |  |  |  | danieldcotta | 8h | 8h | GNDB00009008 | BaseCMActivity |
| 153 | 1.6.8.5 | Mapper, XML: implement required changes to support streamlined |  | 1d | 2002-07-04 A | 2002-07-08 A | 147 | 100% |  |  |  |  |  |  |  |  | hansing | 8h | 8h | GNDB00009013 | BaseCMActivity |
| 154 | 1.6.8.6 | Certificate,Security: Implement Required Changes to support streamlined build process. |  | 1d | 2002-07-04 A | 2002-07-04 A | 131 | 100% |  |  |  |  |  |  |  |  | jagadeesh | 8h | 8h | GNDB00009027 | BaseCMActivity |
| 155 | 1.6.9 | Continuous integration, project configuration, design review |  | 14d | 2002-06-20 A | 2002-07-09 A | 110 | 100% |  | 2002-03-18 | 2002-03-27 | 8d |  |  |  |  | menghua [20%] | 22.4h | 22.4h |  |  |
| 156 | 1.6.10 | I3 integration |  | 11d | 2002-07-10 A | 2002-07-24 A | 155 | 100% |  | 2002-03-28 | 2002-03-29 | 2d |  |  |  |  | menghua; soklay | 176h | 176h |  |  |
| 157 | 1.6.11 | User and Admin Guide Draft 3 |  | 25d | 2002-07-01 A | 2002-08-02 A | 116 | 100% |  |  |  |  |  |  |  |  | AT | 200h | 200h |  |  |
| 158 | 1.6.12 | User and Admin Guide Review |  | 7d | 2002-07-25 A | 2002-08-02 A | 159 | 100% |  |  |  |  |  |  |  |  | LT [50%] | 28h | 28h |  |  |
| 159 | 1.6.13 | I3 test preparation |  | 10d | 2002-07-01 A | 2002-07-24 A | 116 | 100% |  | 2002-03-11 | 2002-03-29 | 15d |  |  | start no earlier than 2002-06-24 |  | LT | 80h | 80h |  |  |
| 160 | 1.6.14 | I3 testing |  | 7d | 2002-07-25 A | 2002-08-02 A | 159, 156 | 100% |  | 2002-04-01 | 2002-04-12 | 10d |  |  |  |  | LT [50%]; danieldcotta | 84h | 84h |  |  |
| 161 | 1.6.15 | Resolve I3 defects |  | 7d | 2002-07-25 A | 2002-08-02 A | 156 | 100% |  |  |  |  |  |  |  |  | menghua [20%]; soklay [20%]; jagadeesh [20%]; andrewhill [20%]; hansing [20%]; mathewyap [20%] | 62.4h | 62.4h |  |  |
| 162 | 1.7 | I3 milestone | milestone | 0d | 2002-08-02 | 2002-08-02 | 161, 160, 158, 157 |  |  |  |  |  | 24d | 0d |  |  |  |  |  |  |  |
| 163 | 1.8 | **Iteration 4** |  | 32d | 2002-07-17 A | 2002-08-30 |  | 35% | 20.91d |  |  |  | 24d |  |  |  |  | 1360h | 289.6h |  |  |
| 164 | 1.8.1 | Meta-info enhancement and action items to conform to DIG |  | 3d | 2002-07-17 A | 2002-07-19 A |  | 100% |  |  |  |  |  |  | start no earlier than 2002-07-17 |  |  |  |  |  |  |
| 165 | 1.8.2 | Meta-info enhancement and action items to conform to DIG (for Andrew) |  | 13d | 2002-07-17 A | 2002-08-02 A |  | 100% |  |  |  |  |  |  | start no earlier than 2002-07-17 |  | andrewhill | 104h | 104h |  |  |
| 166 | 1.8.3 | Bus. Reg.: *Add/Update/Delete BE(s) |  | 4d | 2002-07-22 A | 2002-07-25 A | 164 | 100% |  | 2002-07-17 | 2002-07-22 | 4d |  |  | start no earlier than 2002-07-17 | 2002-08-16 | soklay | 32h | 32h |  |  |
| 167 | 1.8.4 | Web GUI for Bus. Reg.: *Add/Update/Delete BE(s) |  | 1d | 2002-08-06 A | 2002-08-06 | 175 | 70% | 0.3d | 2002-07-17 | 2002-07-17 | 1d | -1d | 0d | start no earlier than 2002-07-17 | 2002-08-16 | andrewhill | 8h | 5.6h |  |  |
| 168 | 1.8.5 | Partner Mgmt: *Assign Partner to BE |  | 10d | 2002-07-26 A | 2002-08-08 | 166 | 90% | 1d | 2002-07-29 | 2002-08-01 | 4d | 0d |  | start no earlier than 2002-07-22 | 2002-08-16 | soklay [50%] | 40h | 36h |  |  |
| 169 | 1.8.6 | Web GUI for Partner Mgmt: *Assign Partner to BE |  | 1d | 2002-08-07 | 2002-08-07 | 167 |  |  | 2002-07-19 | 2002-07-19 | 1d | 3d | 0d | start no earlier than 2002-07-15 | 2002-08-16 | andrewhill | 8h |  |  |  |
| 170 | 1.8.7 | Partner Mgmt: *Assign Channel to Partner |  | 10d | 2002-07-26 A | 2002-08-08 | 168SS | 90% | 1d | 2002-08-02 | 2002-08-06 | 3d | 0d |  |  | 2002-08-16 | soklay [50%] | 40h | 36h |  |  |
| 171 | 1.8.8 | Web GUI for Partner Mgmt: *Assign Channel to Partner |  | 1d | 2002-08-08 | 2002-08-08 | 169 |  |  | 2002-07-22 | 2002-07-22 | 1d | 3d | 0d | start no earlier than 2002-07-17 | 2002-08-16 | andrewhill | 8h |  |  |  |
| 172 | 1.8.9 | User Procedure: *Add/Update/Delete Procedure Definition |  | 11d | 2002-07-22 A | 2002-08-05 | 164 | 50% | 5.5d | 2002-07-17 | 2002-07-23 | 5d | 8d | 0d | start no earlier than 2002-07-17 | 2002-08-16 | jagadeesh [50%] | 44h | 22h |  |  |
| 173 | 1.8.10 | User Procedure: *Add/Update/Delete User Procedure |  | 11d | 2002-07-22 A | 2002-08-05 | 172SS | 50% | 5.5d | 2002-07-24 | 2002-07-30 | 5d | 8d |  | start no earlier than 2002-07-17 | 2002-08-16 | jagadeesh [50%] | 44h | 22h |  |  |
| 174 | 1.8.11 | Doc. Mgmt: *Add/Update/Delete File Type |  | 3d | 2002-07-22 A | 2002-07-24 A | 164 | 100% |  | 2002-07-17 | 2002-07-22 | 3d |  |  | start no earlier than 2002-07-17 | 2002-08-16 | hansing | 24h | 24h |  |  |
| 175 | 1.8.12 | Web GUI for Doc. Mgmt: *Add/Update/Delete File Type |  | 1d | 2002-08-05 A | 2002-08-05 A | 165 | 100% |  | 2002-07-26 | 2002-07-26 | 1d |  |  | start no earlier than 2002-07-17 | 2002-08-16 | andrewhill | 8h | 8h |  |  |
| 176 | 1.8.13 | Doc. Mgmt: *View/Edit |  | 2d | 2002-07-25 | 2002-07-26 | 174 |  |  | 2002-07-30 | 2002-07-31 | 2d | 12d | 3d | start no earlier than 2002-07-17 | 2002-08-16 | hansing | 16h |  |  |  |
| 177 | 1.8.14 | Web GUI for Doc. Mgmt: *View/Edit |  | 1d | 2002-08-12 | 2002-08-12 | 171 |  |  | 2002-07-31 | 2002-07-31 | 1d | 3d | 0d | start no earlier than 2002-07-17 | 2002-08-16 | andrewhill | 8h |  |  |  |
| 178 | 1.8.15 | Doc. Mgmt: Basic import/send/receive/export processing |  | 2d | 2002-08-01 | 2002-08-02 | 176 |  |  | 2002-08-05 | 2002-08-06 | 2d | 9d |  | start no earlier than 2002-07-17 | 2002-08-16 | hansing | 16h |  |  |  |
| 179 | 1.8.16 | Web GUI for Doc. Mgmt: *Manual import |  | 1d | 2002-08-13 | 2002-08-13 | 177 |  |  | 2002-07-29 | 2002-07-29 | 1d | 3d |  | start no earlier than 2002-07-17 | 2002-08-16 | andrewhill | 8h |  |  |  |
| 180 | 1.8.17 | Continuous integration, project configuration, design review |  | 15d | 2002-07-17 | 2002-08-06 |  |  |  | 2002-07-17 | 2002-08-06 | 15d | 19d | 0d | start no earlier than 2002-07-17 |  | menghua [80%] | 96h |  |  |  |
| 181 | 1.8.18 | I4 integration |  | 7d | 2002-08-07 | 2002-08-16 | 180 |  |  | 2002-08-07 | 2002-08-13 | 4d | 24d | 0d |  |  | menghua; soklay | 72h |  |  |  |
| 182 | 1.8.19 | User and Admin Guide |  | 19d | 2002-08-05 | 2002-08-30 | 162 |  |  | 2002-08-05 | 2002-08-23 | 14d | 24d | 0d |  |  | AT | 152h |  |  |  |
| 183 | 1.8.20 | User and Admin Guide Review |  | 10d | 2002-08-19 | 2002-08-30 | 184 |  |  | 2002-08-14 | 2002-08-23 | 8d | 24d | 0d |  |  | LT [50%] | 40h |  |  |  |
| 184 | 1.8.21 | I4 test preparation |  | 9d | 2002-08-05 | 2002-08-16 | 162 |  |  | 2002-08-05 | 2002-08-13 | 6d | 24d | 0d |  |  | LT | 72h |  |  |  |
| 185 | 1.8.22 | I4 testing |  | 10d | 2002-08-19 | 2002-08-30 | 181, 184 |  |  | 2002-08-14 | 2002-08-23 | 8d | 24d | 0d |  |  | LT [50%]; danieldcotta | 120h |  |  |  |
| 186 | 1.8.23 | Resolve I4 defects |  | 10d | 2002-08-19 | 2002-08-30 | 181 |  |  | 2002-08-14 | 2002-08-23 | 8d | 24d | 0d |  |  | menghua; soklay; mathewyap; jagadeesh; hansing; andrewhill | 400h |  |  |  |
| 187 | 1.9 | I4 milestone | milestone | 0d | 2002-08-30 | 2002-08-30 | 186, 185, 183, 182 |  |  | 2002-08-23 | 2002-08-23 | 0d | 24d | 0d | start no earlier than 2002-07-15 |  |  |  |  |  |  |

Notes:
- 141: Text3: 1 -1019238020 2 -692353760 3 0 4 0 5 0 6 0 7 0 8 0 9 0 10 0 11 0
- 142: Text3: 1 2116418358 2 -692353760 3 0 4 0 5 0 6 0 7 0 8 0 9 0 10 0 11 0
- 143: Text3: 1 -242605485 2 -692353760 3 0 4 0 5 0 6 0 7 0 8 0 9 0 10 0 11 0
- 144: Text3: 1 -1481917848 2 -692353760 3 0 4 0 5 0 6 0 7 0 8 0 9 0 10 0 11 0
- 145: Text3: 1 -582988482 2 1095481056 3 0 4 0 5 0 6 0 7 0 8 0 9 0 10 0 11 0
- 146: Text3: 1 -920319716 2 1095481056 3 0 4 0 5 0 6 0 7 0 8 0 9 0 10 0 11 0
- 147: Text3: 1 594558518 2 -692353760 3 0 4 0 5 0 6 0 7 0 8 0 9 0 10 0 11 0
- 148: Text3: 1 1861744775 2 -2114048831 3 0 4 0 5 0 6 0 7 0 8 0 9 0 10 0 11 0
- 149: Text3: 1 2140368119 2 -540807320 3 0 4 0 5 0 6 0 7 0 8 0 9 0 10 0 11 0
- 150: Text3: 1 1982535250 2 -2114048831 3 0 4 0 5 0 6 0 7 0 8 0 9 0 10 0 11 0
- 151: Text3: 1 837381225 2 337058152 3 0 4 0 5 0 6 0 7 0 8 0 9 0 10 0 11 0
- 152: Text3: 1 2081603437 2 646240678 3 0 4 0 5 0 6 0 7 0 8 0 9 0 10 0 11 0
- 153: Text3: 1 1148516537 2 -692353760 3 0 4 0 5 0 6 0 7 0 8 0 9 0 10 0 11 0
- 154: Text3: 1 -750827445 2 -678359795 3 0 4 0 5 0 6 0 7 0 8 0 9 0 10 0 11 0
- 155: Text4: MH[20%]
- 156: Text4: MH,SL
- 157: Text4: AT
- 158: Text4: LT[50%]
- 159: Text4: LT
- 160: Text4: LT[50%],DN
- 161: Text4: MH[20%],AK[20%],SL[20%],HL[20%],KM[20%],MY[20%],JD[20%],AH[20%],HS[20%]
- 164: Text4: All except Andrew
- 180: Text4: MH[20%]
- 181: Text4: MH,SL
- 182: Text4: AT
- 183: Text4: LT[50%]
- 184: Text4: LT
- 186: Text4: MH,SL,HL,KM,MY,JD,AH,HS

| ID | WBS | Task | Type | Duration | Start | Finish | Predecessors | Complete | Remaining | Baseline start | Baseline finish | Baseline duration | Total slack | Free slack | Constraint | Deadline | Resources | Work | Actual work | Text4 |
| --- | --- | --- | --- | --- | --- | --- | --- | --- | --- | --- | --- | --- | --- | --- | --- | --- | --- | --- | --- | --- |
| 188 | 1.10 | **Iteration 5** |  | 72d | 2002-07-23 A | 2002-10-31 |  | 1% | 71.33d |  |  |  | 0d |  |  |  |  | 1120h | 8h |  |
| 189 | 1.10.1 | Bus. Reg.: *Send BE(s) via Channel |  | 4d | 2002-07-23 A | 2002-07-26 |  | 25% | 3d | 2002-07-23 | 2002-07-26 | 4d | 7d |  |  | 2002-08-06 | soklay | 32h | 8h |  |
| 190 | 1.10.2 | Web GUI for Bus. Reg.: *Send BE(s) via Channel |  | 1d | 2002-08-07 | 2002-08-07 | 167 |  |  | 2002-07-18 | 2002-07-18 | 1d | -1d | 0d | start no earlier than 2002-07-17 | 2002-08-06 | andrewhill | 8h |  |  |
| 191 | 1.10.3 | Continuous integration, project configuration, design review |  | 10d | 2002-08-14 | 2002-09-03 |  |  |  | 2002-03-18 | 2002-03-27 | 8d | -56d | 0d | start no earlier than 2002-08-14 |  | menghua [20%] | 16h |  | MH[20%] |
| 192 | 1.10.4 | Web GUI for User Procedure: *Add/Update/Delete Procedure Definition |  | 1d | 2002-09-04 | 2002-09-04 | 191 |  |  | 2002-07-23 | 2002-07-23 | 1d | -56d | 0d | start no earlier than 2002-07-17 | 2002-08-06 | andrewhill | 8h |  |  |
| 193 | 1.10.5 | Web GUI for User Procedure: *Add/Update/Delete User Procedure |  | 1d | 2002-09-05 | 2002-09-05 | 192 |  |  | 2002-07-24 | 2002-07-24 | 1d | -56d | 0d | start no earlier than 2002-07-17 | 2002-08-06 | andrewhill | 8h |  |  |
| 194 | 1.10.6 | User Procedure: Handle executable, external jar, internal jar |  | 5d | 2002-09-06 | 2002-09-12 | 193 |  |  | 2002-07-31 | 2002-08-06 | 5d | -56d | 0d | start no earlier than 2002-07-17 | 2002-08-06 | jagadeesh | 40h |  |  |
| 195 | 1.10.7 | Backend: Handle export to local file system with options to append/overwrite files |  | 7d | 2002-09-13 | 2002-09-23 | 194 |  |  | 2002-07-29 | 2002-08-06 | 7d | -51d | 0d | start no earlier than 2002-07-17 | 2002-08-06 | menghua [20%] | 11.2h |  |  |
| 196 | 1.10.8 | Backend: *Add/Update/Delete Port |  | 8d | 2002-09-24 | 2002-10-03 | 195 |  |  | 2002-07-17 | 2002-07-26 | 8d | -51d | 0d | start no earlier than 2002-07-17 | 2002-08-06 | menghua [20%] | 12.8h |  |  |
| 197 | 1.10.9 | Web GUI for Backend: *Add/Update/Delete Port |  | 1d | 2002-10-04 | 2002-10-04 | 196 |  |  | 2002-07-25 | 2002-07-25 | 1d | -51d | 0d | start no earlier than 2002-07-17 | 2002-08-06 | andrewhill | 8h |  |  |
| 198 | 1.10.10 | Doc. Mgmt: *Manual export from import folder |  | 2d | 2002-10-07 | 2002-10-08 | 197 |  |  | 2002-07-26 | 2002-07-29 | 2d | -51d | 0d | start no earlier than 2002-07-17 | 2002-08-06 | hansing | 16h |  |  |
| 199 | 1.10.11 | Web GUI for Doc. Mgmt: *Manual export from import folder |  | 1d | 2002-10-09 | 2002-10-09 | 198 |  |  | 2002-07-30 | 2002-07-30 | 1d | -48d | 0d | start no earlier than 2002-07-17 | 2002-08-06 | andrewhill | 8h |  |  |
| 200 | 1.10.12 | Doc. Mgmt: *Save in other formats |  | 2d | 2002-10-10 | 2002-10-11 | 199 |  |  | 2002-08-01 | 2002-08-02 | 2d | -48d | 0d | start no earlier than 2002-07-17 | 2002-08-06 | hansing | 16h |  |  |
| 201 | 1.10.13 | Web GUI for Doc. Mgmt: *Save in other formats |  | 1d | 2002-10-14 | 2002-10-14 | 200 |  |  | 2002-08-01 | 2002-08-01 | 1d | -48d | 0d | start no earlier than 2002-07-17 | 2002-08-06 | andrewhill | 8h |  |  |
| 202 | 1.10.14 | I5 integration |  | 3d | 2002-10-15 | 2002-10-17 | 201 |  |  | 2002-03-28 | 2002-03-29 | 2d | 0d |  |  |  | menghua; soklay | 48h |  | MH,SL |
| 203 | 1.10.15 | User and Admin Guide |  | 20d | 2002-09-02 | 2002-09-27 | 187 |  |  |  |  |  | 24d |  |  |  | AT | 160h |  | AT |
| 204 | 1.10.16 | User and Admin Guide Review |  | 10d | 2002-09-16 | 2002-09-27 | 205 |  |  |  |  |  | 24d |  |  |  | LT [50%] | 40h |  | LT[50%] |
| 205 | 1.10.17 | I5 test preparation |  | 10d | 2002-09-02 | 2002-09-13 | 187 |  |  | 2002-03-11 | 2002-03-29 | 15d | 24d | 0d |  |  | LT | 80h |  | LT |
| 206 | 1.10.18 | I5 testing |  | 10d | 2002-10-18 | 2002-10-31 | 202, 205 |  |  | 2002-04-01 | 2002-04-12 | 10d | 0d |  |  |  | LT [50%]; danieldcotta | 120h |  |  |
| 207 | 1.10.19 | Resolve I5 defects |  | 10d | 2002-10-18 | 2002-10-31 | 202 |  |  | 2002-08-14 | 2002-08-23 | 8d | 0d |  |  |  | menghua; soklay; mathewyap; jagadeesh; hansing; andrewhill | 480h |  | MH,SL,HL,KM,MY,JD,AH,HS |
| 208 | 1.11 | I5 milestone | milestone | 0d | 2002-10-31 | 2002-10-31 | 206, 204, 203, 207 |  |  | 2002-03-11 | 2002-03-22 | 10d | 0d |  |  |  |  |  |  |  |
| 209 | 1.12 | **Iteration 6** |  | 54d | 2002-09-09 | 2002-11-21 |  |  |  |  |  |  | 0d |  |  |  |  | 976h |  |  |
| 210 | 1.12.1 | Continuous integration, project configuration, design review |  | 10d | 2002-09-09 | 2002-09-20 |  |  |  | 2002-03-18 | 2002-03-27 | 8d | 29d | 0d | start no earlier than 2002-09-09 |  | menghua [20%] | 16h |  | MH[20%] |
| 211 | 1.12.2 | I6 integration |  | 3d | 2002-09-23 | 2002-09-25 | 210 |  |  | 2002-03-28 | 2002-03-29 | 2d | 29d | 0d |  |  | menghua; soklay | 48h |  | MH,SL |
| 212 | 1.12.3 | User and Admin Guide |  | 15d | 2002-11-01 | 2002-11-21 | 208 |  |  |  |  |  | 0d |  |  |  | AT | 120h |  | AT |
| 213 | 1.12.4 | User and Admin Guide Review |  | 12d | 2002-11-06 | 2002-11-21 | 214 |  |  |  |  |  | 0d |  |  |  | LT [50%] | 48h |  | LT[50%] |
| 214 | 1.12.5 | I6 test preparation |  | 3d | 2002-11-01 | 2002-11-05 | 208 |  |  | 2002-03-11 | 2002-03-29 | 15d | 0d |  |  |  | LT | 24h |  | LT |
| 215 | 1.12.6 | I6 testing |  | 12d | 2002-11-06 | 2002-11-21 | 211, 214 |  |  | 2002-04-01 | 2002-04-12 | 10d | 0d |  |  |  | LT [50%]; danieldcotta | 144h |  | LT[50%],DN |
| 216 | 1.12.7 | Resolve I6 defects |  | 12d | 2002-09-26 | 2002-10-11 | 211 |  |  | 2002-08-14 | 2002-08-23 | 8d | 29d |  |  |  | menghua; soklay; mathewyap; jagadeesh; hansing; andrewhill | 576h |  | MH,SL,HL,KM,MY,JD,AH,HS |
| 217 | 1.13 | I6 milestone | milestone | 0d | 2002-11-21 | 2002-11-21 | 215, 213, 212, 216 |  |  |  |  |  | 0d |  |  |  |  |  |  |  |
